# Pfizer Continuum Project Plan

Schedule from MS Project, 2012-12-03 to 2013-12-09, A marks actual dates.

## Calendars

- Standard: Mon-Fri 08:00-12:00, 13:00-17:00; Sat-Sun off.

## Resources

| Resource |
| --- |
| Bala |
| Smita |
| Nelli |
| Paula |
| Hugh |
| Steve Matyas |
| Todd |
| Steve L |
| Sohal |
| Harsha |
| Naveen |
| BDA Team |
| Systems Team |
| QA3 |
| QA4 |
| QA5 |
| Vrushali |
| Max |
| VCDE |
| Anu |
| rushali |
| CTEP |
| caXchange |
| C3PR |
| caAERS |
| PSC |
| LV |
| BDA |
| "C3PR |
| Documentation |
| caGrid |
| QA |
| BAM |
| Edmond |
| NCI |
| SAIC-F |
| Web Team |
| Bill Dyer |
| CCTS Team |
| John S |
| Patrick |
| Architects |
| Christo |
| John |
| Rhett |
| Nellie |
| Steve |
| Kalpesh |
| David L |
| Stevel L |
| Kumar C |
| Gia |
| Wendy |
| Raj |
| Steve M |
| Lauren |
| Systems |
| CTRO |
| Hannes |
| SMEs |
| Gisele |
| Joe |
| CTRP Dev team |
| CBIIT |
| All |
| Analysts |
| TBD |
| Charles |
| ESST |
| Developers |
| Lisa |
| Christophe |
| Krishna |
| QA1 |
| QA2 |
| David |
| Security |
| Arch |
| Tech Leads |
| Paula B |
| Kalpana |
| KK |
| Abe |
| Kim |
| Vijay |
| CAT |
| George |
| Larry |
| Michael O |
| Resource 1 |
| Resource 2 |
| Resource3 |
| Resource 4 |
| Resource 5 |
| Gisele S |
| Dianne R |
| HR |
| NA |
| SL |
| ScenPro |
| 5AM |
| TP |
| EM |
| KE |
| JM |
| DL |
| Paul |
| Michael |
| Eilis |
| Team |
| Dev team |
| Ram P |
| NIH 508 team |
| Bryan |
| Bill D |
| Marina |
| Ye |
| Rashmi |
| Ann Wiley |
| Henry |
| QA* |
| Systems* |
| Shine |
| System |
| be |
| Jill |

## Schedule

| ID | WBS | Task | Type | Duration | Start | Finish | Predecessors | Complete | Remaining | Total slack | Free slack | Constraint | Resources | Work | Actual work |
| --- | --- | --- | --- | --- | --- | --- | --- | --- | --- | --- | --- | --- | --- | --- | --- |
| 1 | 1 | **caIntegrator** |  | 265.2d? | 2012-12-03 A | 2013-12-09 |  | 8% | 244.02d? | 0d |  | start no earlier than 2012-12-03 |  | 2856h | 422.4h |
| 2 | 1.1 | **caIntegrator 1.4.01 - patch release** |  | 15d | 2013-01-02 | 2013-01-22 |  |  |  | 228.2d |  |  |  | 120h |  |
| 3 | 1.1.1 | Appscan on QA |  | 6d | 2013-01-02 | 2013-01-09 |  |  |  | 227d | 0d | start no earlier than 2013-01-02 | Systems* | 48h |  |
| 4 | 1.1.2 | Appscan on Stage |  | 4d | 2013-01-10 | 2013-01-15 | 3 |  |  | 227d | 0d | start no earlier than 2012-12-05 | Systems* | 32h |  |
| 5 | 1.1.3 | QA reports and Approval |  | 2d | 2013-01-16 | 2013-01-17 | 4 |  |  | 227d | 0d |  | QA* | 16h |  |
| 6 | 1.1.4 | Prod Release |  | 3d | 2013-01-18 | 2013-01-22 | 5 |  |  | 227d |  |  | Systems* | 24h |  |
| 7 | 1.2 | **caIntegrator 1.4.1** |  | 143.5d? | 2012-12-06 A | 2013-06-25 |  | 18% | 117.31d? | 30.7d | 29.5d |  |  | 1256h | 422.4h |
| 8 | 1.2.1 | MILESTONE: PROJECT KICKOFF |  | 1d | 2012-12-06 A | 2012-12-06 A |  | 100% |  |  |  | start no earlier than 2012-12-06 |  |  |  |
| 9 | 1.2.2 | EPLC Project Management Plan |  | 3d | 2013-01-02 A | 2013-01-04 A |  | 100% |  |  |  | start no earlier than 2013-01-02 | Shine | 24h | 24h |
| 10 | 1.2.3 | Github Access |  | 2d | 2013-01-07 A | 2013-01-08 A |  | 100% |  |  |  | start no earlier than 2013-01-07 |  |  |  |
| 11 | 1.2.4 | USCF JBOSS issues |  | 2d | 2013-01-07 A | 2013-01-08 A |  | 100% |  |  |  | start no earlier than 2013-01-07 | Abe | 16h | 16h |
| 12 | 1.2.5 | UCSF Support (Role Based Permission) |  | 1d | 2013-01-25 A | 2013-01-25 A | 11 | 100% |  |  |  |  | Abe | 8h | 8h |
| 13 | 1.2.6 | **OSDI / Build Changes** |  | 19d? | 2013-01-09 A | 2013-02-04 A | 12 | 100% |  |  |  |  | Abe | 208h | 208h |
| 14 | 1.2.6.1 | Local copy to github, split s/w and documentation, license/copyright |  | 3d? | 2013-01-09 A | 2013-01-11 A |  | 100% |  |  |  | start no earlier than 2013-01-09 | Abe | 24h | 24h |
| 15 | 1.2.6.2 | Code Changes |  | 4d | 2013-01-22 A | 2013-01-25 A |  | 100% |  |  |  | start no earlier than 2013-01-22 | Abe | 32h | 32h |
| 16 | 1.2.6.3 | OSDI Phase 1 - complete (Pending AntHill Pro Deployment) |  | 6d | 2013-01-28 A | 2013-02-04 A | 15 | 100% |  |  |  |  | Abe | 48h | 48h |
| 17 | 1.2.7 | 508 Compliance on Dev (100%) |  | 3d | 2013-02-05 A | 2013-02-07 A | 13 | 100% |  |  |  |  | Abe | 24h | 24h |
| 18 | 1.2.8 | UCSF Support |  | 2d | 2013-02-08 A | 2013-02-11 A | 17 | 100% |  |  |  |  | Abe | 16h | 16h |
| 19 | 1.2.9 | Fix Appscan Issues |  | 10d | 2013-02-08 A | 2013-02-21 A | 18 | 100% |  |  |  |  | Abe | 80h | 80h |
| 20 | 1.2.10 | 508 compliance work |  | 4d | 2013-02-22 A | 2013-02-27 A | 19 | 100% |  |  |  |  | Abe | 32h | 32h |
| 21 | 1.2.11 | caBIO replacement changes |  | 14d | 2013-02-28 | 2013-03-19 | 20 |  |  | 0d |  |  | Abe | 112h |  |
| 22 | 1.2.12 | Documentation Changes (Context Sensitive links) |  | 2d | 2013-03-20 | 2013-03-21 | 21 |  |  | 0d |  |  | Abe | 16h |  |
| 23 | 1.2.13 | Documentation Changes |  | 3d | 2013-03-20 | 2013-03-22 | 21 |  |  | 97.2d |  |  | Jill | 24h |  |
| 24 | 1.2.14 | Bug fixes and other improvements |  | 5d | 2013-03-22 | 2013-03-28 | 22 |  |  | 0d |  |  | Abe | 40h |  |
| 25 | 1.2.15 | AntHill Pro setup |  | 2d | 2013-03-29 | 2013-04-01 | 24 |  |  | 0d |  |  | System | 16h |  |
| 26 | 1.2.16 | 508 Compliance Test |  | 3d | 2013-02-22 A | 2013-04-03 | 25 | 60% | 1.2d | 0d |  |  | Abe | 24h | 14.4h |
| 27 | 1.2.17 | Final test and Deployment on Dev (Anthill Pro) |  | 4d | 2013-04-03 | 2013-04-09 | 26 |  |  | 0d |  |  | Abe | 32h |  |
| 28 | 1.2.18 | Appscan on Dev |  | 4d | 2013-03-29 | 2013-04-03 | 24 |  |  | 30.7d | 0d | start no earlier than 2013-02-15 | System | 32h |  |
| 29 | 1.2.19 | Regression Testing on QA tier |  | 15d | 2013-04-04 | 2013-04-24 | 28 |  |  | 30.7d | 0d |  | QA* | 120h |  |
| 30 | 1.2.20 | Installer Testing |  | 4d | 2013-04-25 | 2013-04-30 | 29 |  |  | 68.2d | 0d |  | QA* | 32h |  |
| 31 | 1.2.21 | Section 508 testing on QA tier |  | 2d | 2013-05-01 | 2013-05-02 | 30 |  |  | 68.2d |  |  | QA* | 16h |  |
| 32 | 1.2.22 | Appscan on QA tier |  | 15d | 2013-04-25 | 2013-05-15 | 29 |  |  | 30.7d | 0d |  | Systems* | 120h |  |
| 33 | 1.2.23 | Test Results Review and Reporting |  | 3d | 2013-05-16 | 2013-05-20 | 32 |  |  | 30.7d | 0d |  | QA* | 24h |  |
| 34 | 1.2.24 | Deploy to STAGE |  | 3d | 2013-05-21 | 2013-05-23 | 33 |  |  | 30.7d | 0d |  | Systems* | 24h |  |
| 35 | 1.2.25 | Appscan on STAGE tier |  | 15d | 2013-05-24 | 2013-06-13 | 34 |  |  | 30.7d | 0d |  | Systems* | 120h |  |
| 36 | 1.2.26 | Regression Testing on STAGE |  | 5d | 2013-05-24 | 2013-05-30 | 34 |  |  | 40.7d | 10d |  | QA* | 40h |  |
| 37 | 1.2.27 | Test Results Review and Reporting |  | 3d | 2013-06-14 | 2013-06-18 | 35, 36 |  |  | 30.7d | 0d |  | QA* | 24h |  |
| 38 | 1.2.28 | Create release artifacts |  | 2d | 2013-05-24 | 2013-05-27 | 34 |  |  | 51.2d |  |  |  |  |  |
| 39 | 1.2.29 | Deploy to PRODUCTION |  | 3d | 2013-06-19 | 2013-06-21 | 37 |  |  | 30.7d | 0d |  | Systems* | 24h |  |
| 40 | 1.2.30 | Update product landing page |  | 0.5d | 2013-06-24 | 2013-06-24 | 39 |  |  | 30.7d | 0d |  |  |  |  |
| 41 | 1.2.31 | QA smoke tests PRODUCTION |  | 1d | 2013-06-24 | 2013-06-25 | 39, 40 |  |  | 30.7d | 0d |  | QA* | 8h |  |
| 42 | 1.2.32 | MILESTONE: RELEASE 1.4.1 | milestone | 0d | 2013-06-25 | 2013-06-25 | 41 |  |  | 30.7d |  | start no earlier than 2012-01-09 |  |  |  |
| 43 | 1.2.33 | User Support |  | 85d | 2013-02-13 | 2013-06-11 |  |  |  | 40.2d |  | finish no earlier than 2013-06-11 |  |  |  |

| ID | WBS | Task | Type | Duration | Start | Finish | Predecessors | Total slack | Free slack | Constraint | Resources | Work |
| --- | --- | --- | --- | --- | --- | --- | --- | --- | --- | --- | --- | --- |
| 44 | 1.3 | **caIntegrator 1.5** |  | 174d | 2013-04-09 | 2013-12-09 |  | 0d |  |  |  | 1480h |
| 45 | 1.3.1 | Tech Stack Upgrades - Spring |  | 20d | 2013-04-09 | 2013-05-07 | 27 | 0d |  |  | Abe | 160h |
| 46 | 1.3.2 | Bug Fixes and Improvements |  | 25d | 2013-05-07 | 2013-06-11 | 45 | 0d |  |  | Abe | 200h |
| 47 | 1.3.3 | CSM/UPT upgrade changes |  | 4d | 2013-06-11 | 2013-06-17 | 46 | 0d |  |  | Abe | 32h |
| 48 | 1.3.4 | Support for release 1.4.1 |  | 10d | 2013-06-17 | 2013-07-01 | 47 | 0d |  |  | Abe | 80h |
| 49 | 1.3.5 | Performance Improvements |  | 30d | 2013-07-01 | 2013-08-12 | 48 | 0d |  |  | Abe | 240h |
| 50 | 1.3.6 | Usability and Other Improvements Requested |  | 30d | 2013-08-12 | 2013-09-23 | 49 | 0d |  |  | Abe | 240h |
| 51 | 1.3.7 | Compliance (EPLC, Section 508) |  | 5d | 2013-09-23 | 2013-09-30 | 50 | 0d |  |  | Abe | 40h |
| 52 | 1.3.8 | MILESTONE: EPLC REVIEW (as needed) | milestone | 0d | 2013-09-30 | 2013-09-30 | 51 | 50d |  | start no earlier than 2012-01-09 |  |  |
| 53 | 1.3.9 | Appscan on Dev |  | 12d | 2013-09-30 | 2013-10-16 | 51 | 38d |  |  |  |  |
| 54 | 1.3.10 | Regression Testing on QA tier |  | 12d | 2013-09-30 | 2013-10-16 | 51 | 0d |  |  | QA* | 96h |
| 55 | 1.3.11 | Installer Testing |  | 4d | 2013-10-16 | 2013-10-22 | 54 | 32d | 0d |  | QA* | 32h |
| 56 | 1.3.12 | Section 508 testing on QA tier |  | 2d | 2013-10-22 | 2013-10-24 | 55 | 32d |  |  | QA* | 16h |
| 57 | 1.3.13 | Appscan on QA tier |  | 15d | 2013-10-16 | 2013-11-06 | 54 | 0d |  |  | Systems* | 120h |
| 58 | 1.3.14 | Test Results Review and Reporting |  | 3d | 2013-11-06 | 2013-11-11 | 57 | 0d |  |  | QA* | 24h |
| 59 | 1.3.15 | Deploy to STAGE |  | 1d | 2013-11-11 | 2013-11-12 | 58 | 0d |  |  | Systems* | 8h |
| 60 | 1.3.16 | Appscan on STAGE tier |  | 15d | 2013-11-12 | 2013-12-03 | 59 | 0d |  |  | Systems* | 120h |
| 61 | 1.3.17 | Regression Testing on STAGE |  | 5d | 2013-11-12 | 2013-11-19 | 59 | 10d |  |  | QA* | 40h |
| 62 | 1.3.18 | Test Results Review and Reporting |  | 1d | 2013-12-03 | 2013-12-04 | 60, 61 | 0d |  |  | QA* | 8h |
| 63 | 1.3.19 | Create release artifacts |  | 1d | 2013-11-12 | 2013-11-13 | 59 | 18d |  |  |  |  |
| 64 | 1.3.20 | Deploy to PRODUCTION |  | 2d | 2013-12-04 | 2013-12-06 | 62 | 0d |  |  | Systems* | 16h |
| 65 | 1.3.21 | Update product landing page |  | 0.5d | 2013-12-06 | 2013-12-06 | 64 | 0.5d |  |  |  |  |
| 66 | 1.3.22 | QA smoke tests PRODUCTION |  | 1d | 2013-12-06 | 2013-12-09 | 64 | 0d |  |  | QA* | 8h |
| 67 | 1.3.23 | MILESTONE: RELEASE 1.5 | milestone | 0d | 2013-12-09 | 2013-12-09 | 66 | 0d |  | start no earlier than 2012-01-09 |  |  |
| 68 | 1.3.24 | User Support |  | 88d | 2013-08-06 | 2013-12-05 | 7 | 1.2d |  | finish no earlier than 2013-12-05 |  |  |
| 70 | 1.4 | *QA and Systems are external resources and NOT being proposed under this contract. | milestone | 0d | 2012-12-03 | 2012-12-03 |  | 265.2d |  |  |  |  |
